# PROYECTO_FINAL_XP

Schedule from MS Project, 2024-11-04 to 2025-02-17, status date 2024-12-25, costs in €, A marks actual dates.

## Calendars

- Estándar: Mon-Fri 09:00-13:00, 15:00-19:00; Sat-Sun off. Exceptions (off unless hours are given): 2024-12-18 to 2025-01-02 (Vacaciones de navidad).
- Elaborar Plan Pruebas: Mon-Fri 09:00-13:00, 15:00-19:00; Sat-Sun off. Exceptions (off unless hours are given): 2024-11-19 (Ausencia Cliente).
- Huelga General: Mon-Fri 09:00-13:00, 15:00-19:00; Sat-Sun off. Exceptions (off unless hours are given): 2024-12-04 to 2024-12-06 (Dias no laborables).

## Resources

| Resource | Rate |
| --- | --- |
| A1 | 30 |
| A2 | 30 |
| D1 | 25 |
| D2 | 25 |
| DS1 | 25 |
| DS2 | 20 |
| DS3 | 15 |
| DS4 | 15 |
| DS5 | 15 |
| T1 | 25 |
| T2 | 25 |
| E | 60 |
| Pago1 |  |
| Pago2 |  |
| Dietas | 40 |
| Servidor AWS | 200 |
| D3 | 25 |
| D4 | 25 |
| T3 | 25 |
| T4 | 25 |
| DS6 | 15 |
| DS7 | 15 |

## Schedule

| ID | WBS | Task | Type | Duration | Start | Finish | Predecessors | Complete | Baseline start | Baseline finish | Baseline duration | Constraint | Calendar | Resources | Work | Actual work | Cost | Baseline cost | Actual cost |
| --- | --- | --- | --- | --- | --- | --- | --- | --- | --- | --- | --- | --- | --- | --- | --- | --- | --- | --- | --- |
| 1 | 1 | **FASE 0. ADQUISICIÓN** |  | 15.33d? | 2024-11-04 A | 2024-11-25 A |  | 100% | 2024-11-04 | 2024-11-22 | 15d? |  |  |  | 24h | 24h | 11,100 | 10,600 | 11,100 |
| 2 | 1.1 | Selección de proveedores |  | 2.67h? | 2024-11-04 A | 2024-11-04 A |  | 100% | 2024-11-04 | 2024-11-04 | 2.67h? |  |  | D2; D1; DS1 | 8h | 8h | 200 | 200 | 200 |
| 3 | 1.2 | Análisis de presupuestos |  | 2.67h? | 2024-11-13 A | 2024-11-13 A | 2FS+7d | 100% | 2024-11-13 | 2024-11-13 | 2.67h? |  |  | D1; D2; DS1 | 8h | 8h | 200 | 200 | 200 |
| 4 | 1.3 | Trámite | milestone | 0h | 2024-11-13 A | 2024-11-13 A | 3 | 100% | 2024-11-13 | 2024-11-13 | 0h |  |  |  |  |  |  |  |  |
| 5 | 1.4 | Inicio de Subcontrata | milestone | 0h | 2024-11-20 A | 2024-11-20 A | 4FS+3d | 100% | 2024-11-18 | 2024-11-18 | 0h |  |  | Pago1 |  |  | 4,800 | 4,000 | 4,800 |
| 6 | 1.5 | Fin de Subcontrata | milestone | 0h | 2024-11-25 A | 2024-11-25 A | 5FS+4d | 100% | 2024-11-22 | 2024-11-22 | 0h | start no earlier than 2024-11-22 |  | Pago2 |  |  | 5,700 | 6,000 | 5,700 |
| 7 | 1.6 | Revisión final |  | 2.67h? | 2024-11-25 A | 2024-11-25 A | 6 | 100% | 2024-11-22 | 2024-11-22 | 2.67h? |  |  | D1; D2; DS1 | 8h | 8h | 200 | 200 | 200 |
| 8 | 2 | **FASE ANÁLISIS** |  | 20d? | 2024-11-04 A | 2024-11-29 A |  | 100% | 2024-11-04 | 2024-11-19 | 12d? |  |  |  | 412h | 412h | 15,200 | 11,760 | 15,200 |
| 9 | 2.1 | **Supervisión análisis** |  | 13.5d? | 2024-11-04 A | 2024-11-21 A |  | 100% | 2024-11-04 | 2024-11-15 | 10d? |  |  | E | 268h | 268h | 11,280 | 9,600 | 11,280 |
| 10 | 2.1.1 | Elaborar ERS1 |  | 44h? | 2024-11-04 A | 2024-11-11 A |  | 100% | 2024-11-04 | 2024-11-06 | 20h? |  |  | A1; A2 | 40h | 40h | 1,200 | 1,200 | 1,200 |
| 11 | 2.1.2 | Elaborar ERS2 |  | 64h? | 2024-11-11 A | 2024-11-21 A | 10 | 100% | 2024-11-06 | 2024-11-15 | 60h? |  |  | A1 [50%]; A2 [50%] | 60h | 60h | 1,800 | 1,800 | 1,800 |
| 12 | 2.1.3 | Elaborar Doc. Usuario v1 |  | 60h? | 2024-11-12 A | 2024-11-21 A | 11FF | 100% | 2024-11-06 | 2024-11-15 | 60h? |  |  | A1 [50%]; A2 [50%] | 60h | 60h | 1,800 | 1,800 | 1,800 |
| 13 | 2.2 | Peer Review de Requisitos |  | 16h | 2024-11-21 A | 2024-11-25 A | 11, 12 | 100% | 2024-11-18 | 2024-11-19 | 16h |  |  | A1; A2 | 32h | 32h | 960 | 960 | 960 |
| 14 | 2.3 | Corrección errores de ERS y Doc User |  | 16h | 2024-11-26 A | 2024-11-27 A |  | 100% |  |  |  |  |  | A1; A2 | 32h | 32h | 960 |  | 960 |
| 15 | 2.4 | Corrección errores Plan de Pruebas Aceptacion |  | 16h | 2024-11-28 A | 2024-11-29 A |  | 100% |  |  |  |  |  | T1; T2 | 32h | 32h | 800 |  | 800 |
| 16 | 2.5 | Elaborar plan pruebas Aceptacion |  | 24h? | 2024-11-15 A | 2024-11-21 A | 12FF | 100% | 2024-11-13 | 2024-11-15 | 24h? |  | Elaborar Plan Pruebas | T1; T2 | 48h | 48h | 1,200 | 1,200 | 1,200 |
| 17 | 3 | **FASE DISEÑO** |  | 20d? | 2024-12-02 A | 2025-01-14 A |  | 100% | 2024-11-25 | 2024-12-26 | 24d? |  |  |  | 491h | 491h | 12,275 | 12,150 | 12,275 |
| 18 | 3.1 | **FASE DISEÑO ALTO NIVEL** |  | 12d? | 2024-12-02 A | 2024-12-20 A |  | 100% | 2024-11-25 | 2024-12-06 | 10d? |  |  |  | 195h | 195h | 4,875 | 4,750 | 4,875 |
| 19 | 3.1.1 | Elaborar Arquitectura (diseño alto nivel) |  | 90h? | 2024-12-02 A | 2024-12-20 A | 13, 7 | 100% | 2024-11-25 | 2024-12-06 | 80h? |  | Huelga General | D1 [50%]; D2 [50%] | 90h | 90h | 2,250 | 2,000 | 2,250 |
| 20 | 3.1.2 | Diseño BBDD(diseño alto nivel) |  | 75h? | 2024-12-02 A | 2024-12-18 A | 13, 7 | 100% | 2024-11-25 | 2024-12-06 | 80h? |  | Huelga General | D1 [50%]; D2 [50%] | 75h | 75h | 1,875 | 2,000 | 1,875 |
| 21 | 3.1.3 | Elaborar plan de pruebas de sistema |  | 32h? | 2024-12-17 A | 2024-12-20 A | 20FF, 19FF | 100% | 2024-12-05 | 2024-12-06 | 15h? | finish no earlier than 2024-12-20 | Huelga General | T1; T2 | 30h | 30h | 750 | 750 | 750 |
| 22 | 3.2 | **FASE DISEÑO BAJO NIVEL** |  | 8d? | 2025-01-03 A | 2025-01-14 A |  | 100% | 2024-12-09 | 2024-12-26 | 14d? |  |  |  | 296h | 296h | 7,400 | 7,400 | 7,400 |
| 23 | 3.2.1 | Detalle Componentes (diseño bajo nivel) |  | 40h? | 2025-01-03 A | 2025-01-09 A | 19, 20 | 100% | 2024-12-09 | 2024-12-20 | 80h? |  |  | D1; D2; D3; D4 | 160h | 160h | 4,000 | 4,000 | 4,000 |
| 24 | 3.2.2 | Elaborar plan de pruebas de integracion |  | 36h? | 2025-01-03 A | 2025-01-09 A | 23FF | 100% | 2024-12-16 | 2024-12-20 | 36h? |  |  | T1; T2 | 72h | 72h | 1,800 | 1,800 | 1,800 |
| 25 | 3.2.3 | RDS |  | 16h | 2025-01-10 A | 2025-01-13 A | 23 | 100% | 2024-12-23 | 2024-12-24 | 16h |  |  | D1; D2 | 32h | 32h | 800 | 800 | 800 |
| 26 | 3.2.4 | Elaborar Doc. Usuario v2 |  | 8h? | 2025-01-14 A | 2025-01-14 A | 25 | 100% | 2024-12-25 | 2024-12-26 | 16h? |  |  | D1; D2; D3; D4 | 32h | 32h | 800 | 800 | 800 |

| ID | WBS | Task | Type | Duration | Start | Finish | Predecessors | Complete | Baseline start | Baseline finish | Baseline duration | Constraint | Resources | Work | Actual work | Cost | Baseline cost | Actual cost |
| --- | --- | --- | --- | --- | --- | --- | --- | --- | --- | --- | --- | --- | --- | --- | --- | --- | --- | --- |
| 27 | 4 | **FASE DESARROLLO** |  | 8.42d? | 2025-01-14 A | 2025-01-27 A |  | 100% | 2024-12-27 | 2025-01-09 | 9.47d? |  |  | 336.84h | 336.84h | 6,063.16 | 6,821.06 | 6,063.16 |
| 28 | 4.1 | **Supervision** |  | 8.42d? | 2025-01-14 A | 2025-01-27 A |  | 100% | 2024-12-27 | 2025-01-09 | 9.47d? |  | DS1 [25%] | 336.84h | 336.84h | 6,063.16 | 6,821.06 | 6,063.16 |
| 29 | 4.1.1 | Inicio de subcontrata de BBDD | milestone | 0h? | 2025-01-14 A | 2025-01-14 A | 26 | 100% | 2024-12-27 | 2024-12-30 | 8.42h? |  |  |  |  |  | 705.26 |  |
| 30 | 4.1.2 | Fin de subcontrata de BBDD | milestone | 0h | 2025-01-16 A | 2025-01-16 A | 29FS+2d | 100% |  |  |  |  |  |  |  |  |  |  |
| 31 | 4.1.3 | Implementar Unidades |  | 67.37h? | 2025-01-15 A | 2025-01-27 A | 26 | 100% | 2024-12-30 | 2025-01-09 | 67.37h? | start no earlier than 2025-01-03 | DS2 [50%]; DS3 [50%]; DS4 [50%]; DS5 [50%]; DS1 [37.5%] | 160h | 160h | 2,821.05 | 2,821.05 | 2,821.05 |
| 32 | 4.1.4 | Documentar Unidades |  | 67.37h? | 2025-01-15 A | 2025-01-27 A | 31FF | 100% | 2024-12-30 | 2025-01-09 | 67.37h? |  | DS2 [20%]; DS3 [20%]; DS4 [20%]; DS5 [20%]; DS1 [15%] | 64h | 64h | 1,128.42 | 1,128.42 | 1,128.42 |
| 33 | 4.1.5 | Ejecutar pruebas de unidad |  | 67.37h? | 2025-01-15 A | 2025-01-27 A | 31FF | 100% | 2024-12-30 | 2025-01-09 | 67.37h? |  | DS2 [30%]; DS3; DS4; DS5; DS1 | 96h | 96h | 1,692.63 | 1,692.63 | 1,692.63 |
| 34 | 5 | **PRUEBAS** |  | 11.52d? | 2025-01-27 A | 2025-02-11 A |  | 100% | 2025-01-09 | 2025-01-27 | 12.36d? |  |  | 246.08h | 246.08h | 5,352.73 | 4,766.05 | 5,352.73 |
| 35 | 5.1 | Ejecutar plan de pruebas de integracion |  | 12.88h? | 2025-01-27 A | 2025-01-29 A | 31, 32, 33, 24 | 100% | 2025-01-09 | 2025-01-13 | 20h? |  | T1; T2; T3; T4 | 40h | 40h | 999.98 | 1,000 | 999.98 |
| 36 | 5.2 | Preparar paquete de instalacion |  | 24h | 2025-01-29 A | 2025-02-03 A | 35 | 100% | 2025-01-13 | 2025-01-16 | 24h |  | DS2; DS3; DS4; DS5 | 96h | 96h | 1,560 | 1,560 | 1,560 |
| 37 | 5.3 | Test de usabilidad |  | 16h | 2025-02-03 A | 2025-02-05 A | 36 | 100% | 2025-01-16 | 2025-01-17 | 8h |  | T2; Servidor AWS [1%]; T3; T4 | 40.08h | 40.08h | 1,016 | 416 | 1,016 |
| 38 | 5.4 | Ejecutar plan de pruebas de sistema |  | 15.28h? | 2025-02-05 A | 2025-02-06 A | 21, 37 | 100% | 2025-01-17 | 2025-01-22 | 22.89h? |  | T2; Servidor AWS [1%]; T3; T4 | 46h | 46h | 1,176.74 | 1,190.05 | 1,176.74 |
| 39 | 5.5 | Elaborar Doc. Usuario v3 |  | 24h? | 2025-02-06 A | 2025-02-11 A | 38 | 100% | 2025-01-22 | 2025-01-27 | 24h? |  | T2 | 24h | 24h | 600 | 600 | 600 |
| 40 | 6 | **INSTALACIÓN CLIENTE** |  | 6.25d? | 2025-02-06 A | 2025-02-17 A |  | 100% | 2025-01-22 | 2025-02-03 | 7.5d? |  |  | 140.24h | 140.24h | 3,748 | 3,848 | 3,748 |
| 41 | 6.1 | Ejecutar plan pruebas Aceptacion |  | 24h | 2025-02-06 A | 2025-02-11 A | 16, 38 | 100% | 2025-01-22 | 2025-01-27 | 24h |  | Servidor AWS [1%]; T3 | 24.24h | 24.24h | 648 | 648 | 648 |
| 42 | 6.2 | Elaborar Plan Instalacion y formacion |  | 6h? | 2025-02-11 A | 2025-02-12 A | 41 | 100% | 2025-01-27 | 2025-01-28 | 6h? |  | A1; D1; DS2; T3 | 24h | 24h | 600 | 600 | 600 |
| 43 | 6.3 | Instalacion en cliente |  | 20h? | 2025-02-12 A | 2025-02-17 A | 42 | 100% | 2025-01-28 | 2025-02-03 | 30h? |  | D1; Dietas [25%]; T3; T4 | 60h | 60h | 1,700 | 1,800 | 1,700 |
| 44 | 6.4 | Formacion |  | 16h | 2025-02-13 A | 2025-02-17 A | 43FF | 100% | 2025-01-30 | 2025-02-03 | 16h |  | DS2; A1 | 32h | 32h | 800 | 800 | 800 |
